# Website Bán Sách Fahasa.com

Schedule from MS Project, 2025-10-06 to 2026-01-30, costs in $.

## Calendars

- Standard: Mon-Fri 08:00-12:00, 13:00-17:00; Sat-Sun off.

## Resources

| Resource | Rate |
| --- | --- |
| Developer A | 3.2 |
| BA/Tester | 3.2 |
| Developer B | 3.2 |

## Schedule

| ID | WBS | Task | Type | Duration | Start | Finish | Predecessors | Total slack | Free slack | Constraint | Resources | Work | Cost |
| --- | --- | --- | --- | --- | --- | --- | --- | --- | --- | --- | --- | --- | --- |
| 1 | 1 | **1.0 Thu thập & phân tích yêu cầu** |  | 38.92d | 2025-10-06 | 2025-11-27 |  | 0d |  |  |  | 388h | 1,241.6 |
| 2 | 1.1 | 1.1 Xây dựng bảng khảo sát người dùng |  | 4d | 2025-10-06 | 2025-10-09 |  | 0d |  | start no earlier than 2025-10-06 | BA/Tester | 32h | 102.4 |
| 3 | 1.2 | 1.2 Thu thập yêu cầu người dùng |  | 11.5d | 2025-10-10 | 2025-10-27 | 2 | 0d |  |  | BA/Tester | 92h | 294.4 |
| 4 | 1.3 | 1.3 Phân tích kết quả khảo sát |  | 9d | 2025-10-15 | 2025-10-28 | 3FS-8d | 0d |  |  | BA/Tester | 72h | 230.4 |
| 5 | 1.4 | 1.4 Phân tích yêu cầu chức năng |  | 10d | 2025-10-27 | 2025-11-10 | 4SS+8d | 25.5d | 0d |  | BA/Tester | 80h | 256 |
| 6 | 1.5 | 1.5 Xác định luồng tương tác |  | 5d | 2025-11-10 | 2025-11-17 | 5SS+9d | 43.08d | 0d |  | BA/Tester | 40h | 128 |
| 7 | 1.6 | 1.6 Xác định các Stakeholders |  | 4d | 2025-11-18 | 2025-11-25 | 6SS-7d | 46.08d | 0d |  | BA/Tester | 32h | 102.4 |
| 8 | 1.7 | 1.7 Viết tài liệu yêu cầu phần mềm (SRS) |  | 5d | 2025-11-20 | 2025-11-27 | 7SS+2d | 46.08d | 0d | start no earlier than 2025-11-19 | BA/Tester | 40h | 128 |
| 9 | 1.8 | Hoàn thành phân tích | milestone | 0d | 2025-11-27 | 2025-11-27 | 8 | 46.08d |  |  |  |  |  |
| 10 | 2 | **2.0 Thiết kế hệ thống** |  | 20.5d | 2025-10-17 | 2025-11-14 |  | 0d |  |  |  | 152.8h | 488.96 |
| 11 | 2.1 | 2.1 Thiết kế giao diện người dùng (UI/UX) |  | 9d | 2025-10-17 | 2025-10-30 | 4FS-7d | 0d |  |  | Developer A [90%]; Developer B | 80.8h | 258.56 |
| 12 | 2.2 | 2.2 Thiết kế kiến trúc website |  | 2d | 2025-10-30 | 2025-11-03 | 5FS-7d | 25.5d | 0d |  | Developer A | 16h | 51.2 |
| 13 | 2.3 | 2.3 Thiết kế và kết nối cơ sở dữ liệu |  | 2d | 2025-11-03 | 2025-11-05 | 12SS+1d | 25.5d | 0.5d |  | Developer A | 16h | 51.2 |
| 14 | 2.4 | 2.4 Thiết kế API và tích hợp |  | 2d | 2025-11-10 | 2025-11-11 | 13SS+1d | 25d | 0d |  | Developer A | 16h | 51.2 |
| 15 | 2.5 | 2.5 Viết tài liệu thiết kế phần mềm (SWD) |  | 3d | 2025-11-12 | 2025-11-14 | 14SS-2d | 22d | 0d |  | Developer A | 24h | 76.8 |
| 16 | 2.6 | Hoàn thành thiết kế | milestone | 0d | 2025-11-14 | 2025-11-14 | 15 | 22d | 1d |  |  |  |  |
| 17 | 3 | **3.0 Phát triển phần mềm** |  | 50d | 2025-10-27 | 2026-01-02 |  | 0d |  |  |  | 581.2h | 1,859.84 |
| 18 | 3.1 | **3.1 Frontend** |  | 33d | 2025-10-27 | 2025-12-10 |  | 0d |  |  |  | 252h | 806.4 |
| 19 | 3.1.1 | 3.1.1 Xây dựng trang chủ |  | 3d | 2025-10-27 | 2025-10-29 | 11SS+2d | 0d |  |  | Developer B | 24h | 76.8 |
| 20 | 3.1.2 | 3.1.2 Xây dựng trang sản phẩm |  | 2d | 2025-11-03 | 2025-11-04 | 19SS+1d | 11d | 0d |  | Developer B | 16h | 51.2 |
| 21 | 3.1.3 | 3.1.3 Xây dựng trang chi tiết sản phẩm |  | 2d | 2025-11-05 | 2025-11-06 | 20SS+1d | 11d | 0d |  | Developer B | 16h | 51.2 |
| 22 | 3.1.4 | 3.1.4 Xây dựng trang sách giáo khoa |  | 2d | 2025-11-07 | 2025-11-10 | 21SS+2d | 11d | 0d |  | Developer B | 16h | 51.2 |
| 23 | 3.1.5 | 3.1.5 Xây dựng giỏ hàng |  | 2d | 2025-11-11 | 2025-11-12 | 22SS+2d | 11d | 0d |  | Developer B | 16h | 51.2 |
| 24 | 3.1.6 | 3.1.6 Xây dựng trang Flash Sale |  | 2d | 2025-11-17 | 2025-11-18 | 23SS+2d | 11d | 0d |  | Developer B | 16h | 51.2 |
| 25 | 3.1.7 | 3.1.7 Xây dựng trang mã khuyến mãi |  | 2d | 2025-11-19 | 2025-11-20 | 24SS+2d | 11d | 0d |  | Developer B | 16h | 51.2 |
| 26 | 3.1.8 | 3.1.8 Xây dựng trang sản phẩm mới |  | 2d | 2025-11-21 | 2025-11-24 | 25SS+2d | 11d | 0d |  | Developer B | 16h | 51.2 |
| 27 | 3.1.9 | 3.1.9 Xây dựng form đăng ký |  | 0.5d | 2025-11-25 | 2025-11-25 | 26SS+2d | 11d | 0d |  | Developer B | 4h | 12.8 |
| 28 | 3.1.10 | 3.1.10 Xây dựng form đăng nhập |  | 0.5d | 2025-12-03 | 2025-12-03 | 27SS+1d | 11d | 0d |  | Developer B | 4h | 12.8 |
| 29 | 3.1.11 | 3.1.11 Xây dựng form khôi phục mật khẩu |  | 0.5d | 2025-12-09 | 2025-12-09 | 28SS+1d | 27d | 0d |  | Developer B | 4h | 12.8 |
| 30 | 3.1.12 | 3.1.12 Xây dựng trang thông tin tài khoản |  | 1d | 2025-11-17 | 2025-11-17 | 16SS-1d | 21d | 0d |  | Developer A | 8h | 25.6 |
| 31 | 3.1.13 | 3.1.13 Xây dựng trang sổ địa chỉ |  | 2d | 2025-11-18 | 2025-11-19 | 30SS | 21d | 0d |  | Developer A | 16h | 51.2 |
| 32 | 3.1.14 | 3.1.14 Xây dựng trang đổi mật khẩu |  | 1d | 2025-11-20 | 2025-11-20 | 31SS+1d | 21d | 0d |  | Developer A | 8h | 25.6 |
| 33 | 3.1.15 | 3.1.15 Xây dựng trang đơn hàng |  | 2d | 2025-11-21 | 2025-11-24 | 32SS+1d | 21d | 0d |  | Developer A | 16h | 51.2 |
| 34 | 3.1.16 | 3.1.16 Xây dựng trang chi tiết đơn hàng |  | 2d | 2025-11-25 | 2025-11-26 | 33SS+1d | 21d | 0d |  | Developer A | 16h | 51.2 |
| 35 | 3.1.17 | 3.1.17 Xây dựng trang thông báo |  | 1d | 2025-11-27 | 2025-11-27 | 34SS+1d | 21d | 0d |  | Developer A | 8h | 25.6 |
| 36 | 3.1.18 | 3.1.18 Xây dựng trang ưu đãi thành viên |  | 2d | 2025-12-01 | 2025-12-03 | 35SS+1d | 20d | 0d |  | Developer A | 16h | 51.2 |
| 37 | 3.1.19 | 3.1.19 Xây dựng trang ví voucher |  | 1d | 2025-12-04 | 2025-12-04 | 36SS+1d | 20d | 0d |  | Developer A | 8h | 25.6 |
| 38 | 3.1.20 | 3.1.20 Xây dựng trang tài khoản F-Point/Freeship |  | 1d | 2025-12-10 | 2025-12-10 | 37SS+1d | 20d | 0d |  | Developer A | 8h | 25.6 |

| ID | WBS | Task | Type | Duration | Start | Finish | Predecessors | Total slack | Free slack | Resources | Work | Cost |
| --- | --- | --- | --- | --- | --- | --- | --- | --- | --- | --- | --- | --- |
| 39 | 3.2 | **3.2 Backend** |  | 47d | 2025-10-30 | 2026-01-02 |  | 0d |  |  | 329.2h | 1,053.44 |
| 40 | 3.2.1 | 3.2.1 Xác thực & phân quyền người dùng |  | 1d | 2025-12-09 | 2025-12-09 | 15SS+2d | 38d |  | Developer A | 8h | 25.6 |
| 41 | 3.2.2 | 3.2.2 Lập trình Trang chủ |  | 2d | 2025-10-30 | 2025-10-31 | 19SS+2d | 0d |  | Developer B | 16h | 51.2 |
| 42 | 3.2.3 | 3.2.3 Lập trình Trang sản phẩm |  | 2d | 2025-11-25 | 2025-11-28 | 20SS+2d | 45.5d |  | Developer B | 16h | 51.2 |
| 43 | 3.2.4 | 3.2.4 Lập trình Trang chi tiết sản phẩm |  | 1d | 2025-12-02 | 2025-12-03 | 21SS+2d | 42.5d |  | Developer B | 8h | 25.6 |
| 44 | 3.2.5 | 3.2.5 Lập trình Trang sách giáo khoa |  | 2d | 2025-11-13 | 2025-12-02 | 22SS+2d | 43.6d |  | Developer B | 16h | 51.2 |
| 45 | 3.2.6 | 3.2.6 Lập trình Giỏ hàng |  | 1d | 2025-11-14 | 2025-12-02 | 23SS+2d | 43.5d |  | Developer B | 8h | 25.6 |
| 46 | 3.2.7 | 3.2.7 Lập trình Trang Flash Sale |  | 2d | 2025-12-04 | 2025-12-05 | 24SS+2d | 40d |  | Developer B | 16h | 51.2 |
| 47 | 3.2.8 | 3.2.8 Lập trình Trang mã khuyến mãi |  | 1d | 2025-11-26 | 2025-12-01 | 25SS+2d | 44.5d |  | Developer B | 8h | 25.6 |
| 48 | 3.2.9 | 3.2.9 Lập trình Trang sản phẩm mới |  | 2d | 2025-11-27 | 2025-12-19 | 26SS+2d | 30d |  | Developer B | 16h | 51.2 |
| 49 | 3.2.10 | 3.2.10 Lập trình Đăng ký |  | 0.5d | 2025-11-28 | 2025-11-28 | 27SS+2d | 45.5d |  | Developer B | 4h | 12.8 |
| 50 | 3.2.11 | 3.2.11 Lập trình Đăng nhập |  | 0.5d | 2025-12-08 | 2025-12-08 | 28SS+2d | 11.62d | 0d | Developer B | 4h | 12.8 |
| 51 | 3.2.12 | 3.2.12 Lập trình Khôi phục mật khẩu |  | 0.5d | 2025-12-22 | 2025-12-22 | 29SS+2d | 29d |  | Developer B | 4h | 12.8 |
| 52 | 3.2.13 | 3.2.13 Lập trình Trang thông tin tài khoản |  | 1d | 2025-12-08 | 2025-12-08 | 30SS+2d | 39d |  | Developer A | 8h | 25.6 |
| 53 | 3.2.14 | 3.2.14 Lập trình Trang sổ địa chỉ |  | 1d | 2025-12-05 | 2025-12-05 | 31SS+2d | 40d |  | Developer A | 8h | 25.6 |
| 54 | 3.2.15 | 3.2.15 Lập trình Trang đổi mật khẩu |  | 0.5d | 2025-12-22 | 2025-12-22 | 32SS+2d | 29.5d |  | Developer A | 4h | 12.8 |
| 55 | 3.2.16 | 3.2.16 Lập trình Trang đơn hàng |  | 1d | 2025-12-12 | 2025-12-17 | 33SS+2d | 32.5d |  | Developer A | 8h | 25.6 |
| 56 | 3.2.17 | 3.2.17 Lập trình Trang chi tiết đơn hàng |  | 1d | 2025-11-28 | 2025-11-28 | 34SS+2d | 45d |  | Developer A | 8h | 25.6 |
| 57 | 3.2.18 | 3.2.18 Lập trình Trang thông báo |  | 1d | 2025-12-02 | 2025-12-02 | 35SS+2d | 43d |  | Developer A | 8h | 25.6 |
| 58 | 3.2.19 | 3.2.19 Lập trình Trang ưu đãi thành viên |  | 1d | 2025-12-15 | 2025-12-15 | 36SS+2d | 34d |  | Developer A | 8h | 25.6 |
| 59 | 3.2.20 | 3.2.20 Lập trình Trang ví voucher |  | 1d | 2025-12-11 | 2025-12-11 | 37SS+2d | 36d |  | Developer A | 8h | 25.6 |
| 60 | 3.2.21 | 3.2.21 Lập trình Trang tài khoản F-Point/Freeship |  | 1d | 2025-12-16 | 2025-12-16 | 38SS+2d | 20d | 0d | Developer A | 8h | 25.6 |
| 61 | 3.2.22 | 3.2.22 Xử lý thanh toán & giao dịch |  | 2d | 2025-12-17 | 2025-12-23 | 60SS | 27.5d | 0d | Developer A | 16h | 51.2 |
| 62 | 3.2.23 | 3.2.23 Bảo mật hệ thống |  | 6.5d | 2025-12-08 | 2025-12-17 | 50SS-2d | 4.5d | 0d | Developer B | 52h | 166.4 |
| 63 | 3.2.24 | 3.2.24 Gửi email & thông báo hệ thống |  | 1d | 2025-12-23 | 2025-12-24 | 61SS+3d | 27.5d |  | Developer A | 8h | 25.6 |
| 64 | 3.2.25 | 3.2.25 Tối ưu hiệu năng Backend |  | 6.5d | 2025-12-25 | 2026-01-02 | 60SS | 20d | 0d | Developer A [90%]; Developer B [90%] | 61.2h | 195.84 |
| 65 | 3.3 | Hoàn thành lập trình | milestone | 0d | 2026-01-02 | 2026-01-02 | 64 | 20d |  |  |  |  |

| ID | WBS | Task | Type | Duration | Start | Finish | Predecessors | Total slack | Free slack | Constraint | Resources | Work | Cost |
| --- | --- | --- | --- | --- | --- | --- | --- | --- | --- | --- | --- | --- | --- |
| 66 | 4 | **4.0 Tích hợp hệ thống** |  | 29.5d | 2025-12-18 | 2026-01-28 |  | 2.5d |  |  |  | 36h | 115.2 |
| 67 | 4.1 | **4.1 Tích hợp cổng thanh toán (VNPAY, MoMo…)** |  | 2.5d | 2025-12-18 | 2025-12-22 |  | 4.5d |  |  |  | 12h | 38.4 |
| 68 | 4.1.1 | 4.1.1 Đăng ký tài khoản đối tác VNPAY & MoMo |  | 0.5d | 2025-12-18 | 2025-12-18 | 62 | 5d | 0d |  | Developer B | 4h | 12.8 |
| 69 | 4.1.2 | 4.1.2 Tích hợp API thanh toán (VNPAY, MoMo…) |  | 1d | 2025-12-18 | 2025-12-22 | 68SS | 4.5d | 0d |  | Developer B | 8h | 25.6 |
| 70 | 4.2 | **4.2 Tích hợp bản đồ & tra cứu vận chuyển** |  | 1.5d | 2025-12-23 | 2025-12-25 |  | 2.77d |  |  |  | 12h | 38.4 |
| 71 | 4.2.1 | 4.2.1 Tích hợp API Google Maps (địa chỉ, định vị) |  | 0.5d | 2025-12-23 | 2025-12-24 | 69 | 3.27d | 0d |  | Developer B | 4h | 12.8 |
| 72 | 4.2.2 | 4.2.2 Tích hợp API tra cứu vận đơn (GHN, GHTK…) |  | 1d | 2025-12-24 | 2025-12-25 | 71SS | 2.77d |  |  | Developer B | 8h | 25.6 |
| 73 | 4.3 | 4.3 Tích hợp đăng nhập mạng xã hội (Facebook, Google) |  | 1.5d | 2025-12-29 | 2026-01-28 | 72SS | 2.5d | 0d |  | Developer B | 12h | 38.4 |
| 74 | 4.4 | Hoàn thành tích hợp | milestone | 0d | 2026-01-28 | 2026-01-28 | 73 | 2.5d |  |  |  |  |  |
| 75 | 5 | **5.0 Kiểm thử và triển khai website** |  | 68.5d | 2025-10-28 | 2026-01-30 |  | 0d |  |  |  | 839.41h | 2,686.12 |
| 76 | 5.1 | 5.1 Viết test case |  | 16d | 2025-10-28 | 2025-12-15 | 5SS+1d | 34.08d |  |  | BA/Tester | 128h | 409.6 |
| 77 | 5.2 | 5.2 Triển khai hệ thống lên môi trường test (AWS) |  | 1.5d | 2025-12-18 | 2025-12-19 | 38SS+6d | 30.5d |  |  | Developer A | 12h | 38.4 |
| 78 | 5.3 | 5.3 Kiểm thử giao diện |  | 12d | 2025-12-09 | 2025-12-25 | 22SS-12d | 26.93d |  |  | BA/Tester | 96h | 307.2 |
| 79 | 5.4 | 5.4 Kiểm thử chức năng |  | 14d | 2025-10-31 | 2025-11-19 | 41FS-1d | 0d |  |  | BA/Tester | 112h | 358.4 |
| 80 | 5.5 | 5.5 Kiểm thử bảo mật & hiệu năng |  | 10d | 2025-12-19 | 2026-01-09 | 79FS-2d | 11.07d | 0d | start no earlier than 2025-12-19 | BA/Tester | 80h | 256 |
| 81 | 5.6 | 5.6 Kiểm thử thanh toán ở môi trường sandbox |  | 2.5d | 2026-01-12 | 2026-01-14 | 80FS-3d | 11.5d | 0d |  | BA/Tester | 20h | 64 |
| 82 | 5.7 | 5.7 Kiểm thử tra cứu vận chuyển theo mã đơn hàng |  | 2.5d | 2026-01-13 | 2026-01-15 | 81FS-2d | 11d |  |  | BA/Tester | 20h | 64 |
| 83 | 5.8 | 5.8 Kiểm thử tích hợp |  | 11d | 2025-11-17 | 2025-12-09 | 79FS-3d | 0d |  |  | BA/Tester | 88h | 281.6 |
| 84 | 5.9 | 5.9 Kiểm thử chấp nhận người dùng |  | 3d | 2026-01-08 | 2026-01-14 | 80FS-1d | 12.07d |  |  | BA/Tester | 24h | 76.8 |
| 85 | 5.10 | 5.10 Xử lý lỗi |  | 15.5d | 2026-01-05 | 2026-01-26 | 83SS+1d | 0d |  |  | Developer A; Developer B | 155.41h | 497.32 |
| 86 | 5.11 | 5.11 Triển khai website |  | 3d | 2026-01-26 | 2026-01-30 | 85FS-2d | 0d |  |  | Developer A | 24h | 76.8 |
| 87 | 5.12 | 5.12 Viết tài liệu hướng dẫn cài đặt |  | 5d | 2026-01-09 | 2026-01-15 | 85SS+3d | 11d |  |  | Developer B | 40h | 128 |
| 88 | 5.13 | 5.13 Viết tài liệu Hướng dẫn sử dụng |  | 5d | 2026-01-02 | 2026-01-08 | 83SS+6d | 16d | 0d |  | BA/Tester | 40h | 128 |
| 89 | 5.14 | Hoàn thành kiểm thử & triển khai website | milestone | 0d | 2026-01-08 | 2026-01-08 | 88 | 16d |  |  |  |  |  |
